# Diagrama de Gantt

Schedule from MS Project, 2019-02-09 to 2021-02-25, costs in $, A marks actual dates.

## Calendars

- Estándar: Mon-Fri 09:00-13:00, 15:00-19:00; Sat-Sun off.

## Resources

| Resource | Rate | Cost per use |
| --- | --- | --- |
| Encuesta (Impresora Marca: HP, Modelo: W2G50A) | 800 | 2000 |
| Computador (Procesador: Intel Core i3, Memoria RAM: 4GB, Sistema Operativo: Windows) | 2000 | 7000 |
| Brian Moya (Scrum Master y Scrum Development) | 5000 | 6000 |
| Luis Quiroga (Scrum Master y Scrum Development) | 5000 | 6000 |

## Schedule

| ID | WBS | Task | Type | Duration | Start | Finish | Complete | Remaining | Actual start | Total slack | Constraint | Resources | Work | Actual work | Cost | Actual cost |
| --- | --- | --- | --- | --- | --- | --- | --- | --- | --- | --- | --- | --- | --- | --- | --- | --- |
| 1 | 1 | **PROYECTO API** |  | 535d | 2019-02-09 | 2021-02-25 | 53% | 251.52d | 2019-02-25 |  |  |  | 38792h | 21024.8h | 194,640,206.32 | 105,724,582.94 |
| 2 | 1.1 | **Análisis** |  | 210d | 2019-02-23 | 2019-12-13 A | 100% |  | 2019-02-25 |  |  |  | 4686h | 4686h | 23,632,000.07 | 23,632,000.07 |
| 3 | 1.1.1 | **Recolección de Información** |  | 22d | 2019-02-23 | 2019-03-24 A | 100% |  | 2019-02-25 |  |  |  | 698h | 698h | 3,508,000 | 3,508,000 |
| 4 | 1.1.1.1 | Encuesta | manual | 12.75d | 2019-02-25 A | 2019-03-24 A | 100% |  |  |  |  | Encuesta (Impresora Marca: HP, Modelo: W2G50A) [500%]; Brian Moya (Scrum Master y Scrum Development); Luis Quiroga (Scrum Master y Scrum Development) | 698h | 698h | 3,508,000 | 3,508,000 |
| 5 | 1.1.2 | Ficha técnica del proyecto | manual | 6.25d | 2019-03-15 A | 2019-03-23 A | 100% |  |  |  | finish no earlier than 2019-03-16 | Computador (Procesador: Intel Core i3, Memoria RAM: 4GB, Sistema Operativo: Windows) [200%]; Brian Moya (Scrum Master y Scrum Development); Luis Quiroga (Scrum Master y Scrum Development) | 206h | 206h | 1,053,000 | 1,053,000 |
| 6 | 1.1.3 | Requisitos Funcionales - Requisitos No Funcionales | manual | 6d | 2019-03-23 A | 2019-04-18 A | 100% |  |  |  |  | Computador (Procesador: Intel Core i3, Memoria RAM: 4GB, Sistema Operativo: Windows) [200%]; Brian Moya (Scrum Master y Scrum Development); Luis Quiroga (Scrum Master y Scrum Development) | 308h | 308h | 1,563,000 | 1,563,000 |
| 7 | 1.1.4 | Historias de Usuario | manual | 6d | 2019-03-30 A | 2019-04-25 A | 100% |  |  |  |  | Computador (Procesador: Intel Core i3, Memoria RAM: 4GB, Sistema Operativo: Windows) [200%]; Brian Moya (Scrum Master y Scrum Development); Luis Quiroga (Scrum Master y Scrum Development) | 308h | 308h | 1,563,000 | 1,563,000 |
| 8 | 1.1.5 | IEEE830 | manual | 11d | 2019-04-07 A | 2019-06-04 A | 100% |  |  |  |  | Computador (Procesador: Intel Core i3, Memoria RAM: 4GB, Sistema Operativo: Windows) [200%]; Brian Moya (Scrum Master y Scrum Development); Luis Quiroga (Scrum Master y Scrum Development) | 692h | 692h | 3,483,000 | 3,483,000 |
| 9 | 1.1.6 | BPMN | manual | 14.75d | 2019-04-28 A | 2019-05-18 A | 100% |  |  |  | start no earlier than 2019-04-28 | Computador (Procesador: Intel Core i3, Memoria RAM: 4GB, Sistema Operativo: Windows) [200%]; Brian Moya (Scrum Master y Scrum Development); Luis Quiroga (Scrum Master y Scrum Development) | 498h | 498h | 2,513,000 | 2,513,000 |
| 10 | 1.1.7 | Hardware | manual | 21d | 2019-11-09 A | 2019-12-13 A | 100% |  |  |  |  | Computador (Procesador: Intel Core i3, Memoria RAM: 4GB, Sistema Operativo: Windows) [200%]; Luis Quiroga (Scrum Master y Scrum Development); Brian Moya (Scrum Master y Scrum Development) | 834h | 834h | 4,193,000 | 4,193,000 |
| 11 | 1.1.8 | Software | manual | 21d | 2019-11-09 A | 2019-12-13 A | 100% |  |  |  |  | Computador (Procesador: Intel Core i3, Memoria RAM: 4GB, Sistema Operativo: Windows) [200%]; Luis Quiroga (Scrum Master y Scrum Development); Brian Moya (Scrum Master y Scrum Development) | 834h | 834h | 4,193,000 | 4,193,000 |
| 12 | 1.1.9 | Ensayos Normas de Seguridad | manual | 6d | 2019-10-26 A | 2019-11-21 A | 100% |  |  |  |  | Computador (Procesador: Intel Core i3, Memoria RAM: 4GB, Sistema Operativo: Windows) [200%]; Luis Quiroga (Scrum Master y Scrum Development); Brian Moya (Scrum Master y Scrum Development) | 308h | 308h | 1,563,000.07 | 1,563,000.07 |
| 13 | 1.2 | **Diseño** |  | 80d | 2019-05-18 A | 2019-09-07 A | 100% |  |  |  |  |  | 1722h | 1722h | 8,771,000 | 8,771,000 |
| 14 | 1.2.1 | Modelo Entidad-Relación (MER) | manual | 6d | 2019-05-18 A | 2019-06-17 A | 100% |  |  |  |  | Computador (Procesador: Intel Core i3, Memoria RAM: 4GB, Sistema Operativo: Windows) [200%]; Brian Moya (Scrum Master y Scrum Development); Luis Quiroga (Scrum Master y Scrum Development) | 356h | 356h | 1,803,000 | 1,803,000 |
| 15 | 1.2.2 | Diagrama de Clases | manual | 6d | 2019-06-02 A | 2019-06-26 A | 100% |  |  |  |  | Computador (Procesador: Intel Core i3, Memoria RAM: 4GB, Sistema Operativo: Windows) [200%]; Brian Moya (Scrum Master y Scrum Development); Luis Quiroga (Scrum Master y Scrum Development) | 308h | 308h | 1,563,000 | 1,563,000 |
| 16 | 1.2.3 | Diagrama de Casos de Uso | manual | 3.75d | 2019-06-22 A | 2019-06-29 A | 100% |  |  |  |  | Computador (Procesador: Intel Core i3, Memoria RAM: 4GB, Sistema Operativo: Windows) [200%]; Brian Moya (Scrum Master y Scrum Development); Luis Quiroga (Scrum Master y Scrum Development) | 180h | 180h | 923,000 | 923,000 |
| 17 | 1.2.4 | Casos de Uso Extendido | manual | 6d | 2019-06-30 A | 2019-07-24 A | 100% |  |  |  |  | Computador (Procesador: Intel Core i3, Memoria RAM: 4GB, Sistema Operativo: Windows) [200%]; Brian Moya (Scrum Master y Scrum Development); Luis Quiroga (Scrum Master y Scrum Development) | 308h | 308h | 1,563,000 | 1,563,000 |
| 18 | 1.2.5 | Diccionario de Datos | manual | 7d | 2019-07-20 A | 2019-07-28 A | 100% |  |  |  |  | Computador (Procesador: Intel Core i3, Memoria RAM: 4GB, Sistema Operativo: Windows) [200%]; Brian Moya (Scrum Master y Scrum Development); Luis Quiroga (Scrum Master y Scrum Development) | 210h | 210h | 1,073,000 | 1,073,000 |
| 19 | 1.2.6 | Diagrama de Distribución | manual | 3.75d | 2019-07-28 A | 2019-08-03 A | 100% |  |  |  |  | Computador (Procesador: Intel Core i3, Memoria RAM: 4GB, Sistema Operativo: Windows) [200%]; Brian Moya (Scrum Master y Scrum Development); Luis Quiroga (Scrum Master y Scrum Development) | 132h | 132h | 683,000 | 683,000 |
| 20 | 1.2.7 | Sketches | manual | 4.75d | 2019-08-24 A | 2019-09-07 A | 100% |  |  |  |  | Computador (Procesador: Intel Core i3, Memoria RAM: 4GB, Sistema Operativo: Windows) [200%]; Brian Moya (Scrum Master y Scrum Development); Luis Quiroga (Scrum Master y Scrum Development) | 228h | 228h | 1,163,000 | 1,163,000 |
| 21 | 1.3 | **Desarrollo** |  | 87.25d | 2019-08-25 A | 2019-12-25 | 51% | 42.51d |  | 0d |  |  | 1992h | 944h | 10,098,000 | 4,810,500 |
| 22 | 1.3.1 | Mockups | manual | 11d | 2019-08-25 A | 2019-10-22 A | 100% |  |  |  |  | Computador (Procesador: Intel Core i3, Memoria RAM: 4GB, Sistema Operativo: Windows) [200%]; Brian Moya (Scrum Master y Scrum Development); Luis Quiroga (Scrum Master y Scrum Development) | 212h | 212h | 1,083,000 | 1,083,000 |
| 23 | 1.3.2 | Diseño de páginas web | manual | 6d | 2019-08-25 A | 2019-09-18 A | 100% |  |  |  |  | Computador (Procesador: Intel Core i3, Memoria RAM: 4GB, Sistema Operativo: Windows) [200%]; Brian Moya (Scrum Master y Scrum Development); Luis Quiroga (Scrum Master y Scrum Development) | 308h | 308h | 1,563,000 | 1,563,000 |
| 24 | 1.3.3 | Base de Datos Normalización Proyecto API | manual | 7d | 2019-09-22 A | 2019-10-25 A | 100% |  |  |  |  | Computador (Procesador: Intel Core i3, Memoria RAM: 4GB, Sistema Operativo: Windows) [200%]; Brian Moya (Scrum Master y Scrum Development); Luis Quiroga (Scrum Master y Scrum Development) | 404h | 404h | 2,043,000 | 2,043,000 |
| 25 | 1.3.4 | Seguridad Bases de Datos | manual | 17.25d | 2019-10-26 | 2019-12-25 |  |  |  |  |  | Computador (Procesador: Intel Core i3, Memoria RAM: 4GB, Sistema Operativo: Windows) [200%]; Brian Moya (Scrum Master y Scrum Development); Luis Quiroga (Scrum Master y Scrum Development) | 692h |  | 3,483,000 |  |
| 26 | 1.3.5 | Versionamiento | manual | 1.5d | 2019-11-09 A | 2019-11-11 | 67% | 0.5d |  |  |  | Computador (Procesador: Intel Core i3, Memoria RAM: 4GB, Sistema Operativo: Windows) [200%]; Brian Moya (Scrum Master y Scrum Development); Luis Quiroga (Scrum Master y Scrum Development) | 68h | 20h | 363,000 | 121,500 |
| 27 | 1.3.6 | CMD | manual | 6d | 2019-11-02 | 2019-11-08 |  |  |  |  |  | Computador (Procesador: Intel Core i3, Memoria RAM: 4GB, Sistema Operativo: Windows) [200%]; Brian Moya (Scrum Master y Scrum Development); Luis Quiroga (Scrum Master y Scrum Development) | 308h |  | 1,563,000 |  |

| ID | WBS | Task | Type | Duration | Start | Finish | Complete | Remaining | Total slack | Resources | Work | Actual work | Cost | Actual cost |
| --- | --- | --- | --- | --- | --- | --- | --- | --- | --- | --- | --- | --- | --- | --- |
| 28 | 1.4 | **Implementación** |  | 193.25d | 2019-11-02 A | 2020-07-30 | 36% | 123.95d | 0d |  | 12352h | 5461.6h | 61,898,000 | 27,432,876.62 |
| 29 | 1.4.1 | Implementación pagina web | manual | 24.75d | 2019-11-02 A | 2020-03-30 | 87% | 3.15d |  | Computador (Procesador: Intel Core i3, Memoria RAM: 4GB, Sistema Operativo: Windows) [200%]; Brian Moya (Scrum Master y Scrum Development); Luis Quiroga (Scrum Master y Scrum Development) | 780h | 780h | 3,923,000 | 3,922,114.95 |
| 30 | 1.4.2 | Implementación base de datos | manual | 32d | 2019-11-02 A | 2020-03-30 | 8% | 29.3d |  | Computador (Procesador: Intel Core i3, Memoria RAM: 4GB, Sistema Operativo: Windows) [200%]; Brian Moya (Scrum Master y Scrum Development); Luis Quiroga (Scrum Master y Scrum Development) | 1700h | 159.2h | 8,523,000 | 815,460.12 |
| 31 | 1.4.3 | Implementación base de datos a página web | manual | 33d | 2019-11-02 A | 2020-04-02 | 8% | 30.3d |  | Computador (Procesador: Intel Core i3, Memoria RAM: 4GB, Sistema Operativo: Windows) [200%]; Brian Moya (Scrum Master y Scrum Development); Luis Quiroga (Scrum Master y Scrum Development) | 1748h | 159.2h | 8,763,000 | 815,364.3 |
| 32 | 1.4.4 | Pruebas | manual | 62d | 2019-12-07 A | 2020-07-30 | 34% | 41d |  | Computador (Procesador: Intel Core i3, Memoria RAM: 4GB, Sistema Operativo: Windows) [200%]; Brian Moya (Scrum Master y Scrum Development); Luis Quiroga (Scrum Master y Scrum Development) | 2708h | 1316h | 13,563,000 | 6,600,943.87 |
| 33 | 1.4.5 | Funcionamiento página web | manual | 44.95d | 2019-12-07 A | 2020-07-30 | 84% | 7.15d |  | Computador (Procesador: Intel Core i3, Memoria RAM: 4GB, Sistema Operativo: Windows) [200%]; Brian Moya (Scrum Master y Scrum Development); Luis Quiroga (Scrum Master y Scrum Development) | 2708h | 2512.8h | 13,563,000 | 12,586,752.24 |
| 34 | 1.4.6 | Funcionamiento del software | manual | 66d | 2019-12-07 A | 2020-07-30 | 13% | 57.6d |  | Computador (Procesador: Intel Core i3, Memoria RAM: 4GB, Sistema Operativo: Windows) [200%]; Brian Moya (Scrum Master y Scrum Development); Luis Quiroga (Scrum Master y Scrum Development) | 2708h | 534.4h | 13,563,000 | 2,692,241.14 |
| 35 | 1.5 | **Mantenimiento** |  | 135d | 2020-06-22 A | 2020-12-27 | 45% | 73.85d | 0d |  | 18040h | 8211.2h | 90,241,206.25 | 41,078,206.25 |
| 36 | 1.5.1 | Ajustes del Proyecto | manual | 136d | 2020-06-22 A | 2020-12-26 | 91% | 12.8d |  | Computador (Procesador: Intel Core i3, Memoria RAM: 4GB, Sistema Operativo: Windows) [160.3%]; Brian Moya (Scrum Master y Scrum Development); Luis Quiroga (Scrum Master y Scrum Development) | 8996h | 8211.2h | 45,002,206.25 | 41,078,206.25 |
| 37 | 1.5.2 | Actualización del sistema | manual | 136d | 2020-06-22 | 2020-12-27 |  |  |  | Computador (Procesador: Intel Core i3, Memoria RAM: 4GB, Sistema Operativo: Windows); Brian Moya (Scrum Master y Scrum Development); Luis Quiroga (Scrum Master y Scrum Development) | 9044h |  | 45,239,000 |  |
